# Pfizer Continuum Project Plan

Schedule from MS Project, 2012-12-03 to 2013-12-05, A marks actual dates.

## Calendars

- Standard: Mon-Fri 08:00-12:00, 13:00-17:00; Sat-Sun off.

## Resources

| Resource |
| --- |
| Bala |
| Smita |
| Nelli |
| Paula |
| Hugh |
| Steve Matyas |
| Todd |
| Steve L |
| Sohal |
| Harsha |
| Naveen |
| BDA Team |
| Systems Team |
| QA3 |
| QA4 |
| QA5 |
| Vrushali |
| Max |
| VCDE |
| Anu |
| rushali |
| CTEP |
| caXchange |
| C3PR |
| caAERS |
| PSC |
| LV |
| BDA |
| "C3PR |
| Documentation |
| caGrid |
| QA |
| BAM |
| Edmond |
| NCI |
| SAIC-F |
| Web Team |
| Bill Dyer |
| CCTS Team |
| John S |
| Patrick |
| Architects |
| Christo |
| John |
| Rhett |
| Nellie |
| Steve |
| Kalpesh |
| David L |
| Stevel L |
| Kumar C |
| Gia |
| Wendy |
| Raj |
| Steve M |
| Lauren |
| Systems |
| CTRO |
| Hannes |
| SMEs |
| Gisele |
| Joe |
| CTRP Dev team |
| CBIIT |
| All |
| Analysts |
| TBD |
| Charles |
| ESST |
| Developers |
| Lisa |
| Christophe |
| Krishna |
| QA1 |
| QA2 |
| David |
| Security |
| Arch |
| Tech Leads |
| Paula B |
| Kalpana |
| KK |
| Abe |
| Kim |
| Vijay |
| CAT |
| George |
| Larry |
| Michael O |
| Resource 1 |
| Resource 2 |
| Resource3 |
| Resource 4 |
| Resource 5 |
| Gisele S |
| Dianne R |
| HR |
| NA |
| SL |
| ScenPro |
| 5AM |
| TP |
| EM |
| KE |
| JM |
| DL |
| Paul |
| Michael |
| Eilis |
| Team |
| Dev team |
| Ram P |
| NIH 508 team |
| Bryan |
| Bill D |
| Marina |
| Ye |
| Rashmi |
| Ann Wiley |
| Henry |
| QA* |
| Systems* |
| Shine |
| System |

## Schedule

| ID | WBS | Task | Type | Duration | Start | Finish | Predecessors | Complete | Remaining | Total slack | Free slack | Constraint | Resources | Work | Actual work |
| --- | --- | --- | --- | --- | --- | --- | --- | --- | --- | --- | --- | --- | --- | --- | --- |
| 1 | 1 | **caIntegrator** |  | 264d? | 2012-12-03 A | 2013-12-05 |  | 4% | 252.61d? | 0d |  | start no earlier than 2012-12-03 |  | 2656h | 256h |
| 2 | 1.1 | **caIntegrator 1.4.01 - patch release** |  | 15d | 2013-01-02 | 2013-01-22 |  |  |  | 227d |  |  |  | 120h |  |
| 3 | 1.1.1 | Appscan on QA |  | 6d | 2013-01-02 | 2013-01-09 |  |  |  | 227d | 0d | start no earlier than 2013-01-02 | Systems* | 48h |  |
| 4 | 1.1.2 | Appscan on Stage |  | 4d | 2013-01-10 | 2013-01-15 | 3 |  |  | 227d | 0d | start no earlier than 2012-12-05 | Systems* | 32h |  |
| 5 | 1.1.3 | QA reports and Approval |  | 2d | 2013-01-16 | 2013-01-17 | 4 |  |  | 227d | 0d |  | QA* | 16h |  |
| 6 | 1.1.4 | Prod Release |  | 3d | 2013-01-18 | 2013-01-22 | 5 |  |  | 227d |  |  | Systems* | 24h |  |
| 7 | 1.2 | **caIntegrator 1.4.1** |  | 134d? | 2012-12-06 A | 2013-06-11 |  | 11% | 118.84d? | 39d |  |  |  | 944h | 256h |
| 8 | 1.2.1 | MILESTONE: PROJECT KICKOFF |  | 1d | 2012-12-06 A | 2012-12-06 A |  | 100% |  |  |  | start no earlier than 2012-12-06 |  |  |  |
| 9 | 1.2.2 | EPLC Project Management Plan |  | 3d | 2013-01-02 A | 2013-01-04 A |  | 100% |  |  |  | start no earlier than 2013-01-02 | Shine | 24h | 24h |
| 10 | 1.2.3 | Github Access |  | 2d | 2013-01-07 A | 2013-01-08 A |  | 100% |  |  |  | start no earlier than 2013-01-07 |  |  |  |
| 11 | 1.2.4 | USCF JBOSS issues |  | 2d | 2013-01-07 A | 2013-01-08 A |  | 100% |  |  |  | start no earlier than 2013-01-07 | Abe | 16h | 16h |
| 12 | 1.2.5 | UCSF Support (Role Based Permission) |  | 1d | 2013-01-25 A | 2013-01-25 A | 11 | 100% |  |  |  |  | Abe | 8h | 8h |
| 13 | 1.2.6 | **OSDI / Build Changes** |  | 19d? | 2013-01-09 A | 2013-02-04 A | 12 | 100% |  |  |  |  | Abe | 208h | 208h |
| 14 | 1.2.6.1 | Local copy to github, split s/w and documentation, license/copyright |  | 3d? | 2013-01-09 A | 2013-01-11 A |  | 100% |  |  |  | start no earlier than 2013-01-09 | Abe | 24h | 24h |
| 15 | 1.2.6.2 | Code Changes |  | 4d | 2013-01-22 A | 2013-01-25 A |  | 100% |  |  |  | start no earlier than 2013-01-22 | Abe | 32h | 32h |
| 16 | 1.2.6.3 | OSDI Phase 1 - complete (Pending AntHill Pro Deployment) |  | 6d | 2013-01-28 A | 2013-02-04 A | 15 | 100% |  |  |  |  | Abe | 48h | 48h |
| 17 | 1.2.7 | 508 Compliance (100%) |  | 5d | 2013-02-05 | 2013-02-11 | 13 |  |  | 59.5d | 0d |  | Abe | 40h |  |
| 18 | 1.2.8 | Fix Appscan Issues |  | 10d | 2013-02-12 | 2013-02-25 | 17 |  |  | 59.5d | 0d |  | Abe | 80h |  |
| 19 | 1.2.9 | Documentation Changes (Context Sensitive links) |  | 1d? | 2013-02-26 | 2013-02-26 | 18 |  |  | 59.5d | 0d |  | Abe | 8h |  |
| 20 | 1.2.10 | AntHill Pro setup |  | 1d? | 2013-02-27 | 2013-02-27 | 19 |  |  | 109d | 0d |  | System | 8h |  |
| 21 | 1.2.11 | Final test and Deployment on Dev (Anthill Pro) |  | 4d | 2013-02-28 | 2013-03-05 | 20 |  |  | 109d |  |  | Abe | 32h |  |
| 22 | 1.2.12 | Appscan on Dev |  | 4d | 2013-02-27 | 2013-03-04 | 19 |  |  | 59.5d | 0d | start no earlier than 2013-02-15 | System | 32h |  |
| 23 | 1.2.13 | Regression Testing on QA tier |  | 12d | 2013-03-05 | 2013-03-20 | 22 |  |  | 59.5d | 0d |  | QA* | 96h |  |
| 24 | 1.2.14 | Installer Testing |  | 4d | 2013-03-21 | 2013-03-26 | 23 |  |  | 92d | 0d |  | QA* | 32h |  |
| 25 | 1.2.15 | Section 508 testing on QA tier |  | 2d | 2013-03-27 | 2013-03-28 | 24 |  |  | 92d |  |  | QA* | 16h |  |
| 26 | 1.2.16 | Appscan on QA tier |  | 15d | 2013-03-21 | 2013-04-10 | 23 |  |  | 59.5d | 0d |  | Systems* | 120h |  |
| 27 | 1.2.17 | Test Results Review and Reporting |  | 1d | 2013-04-11 | 2013-04-11 | 26 |  |  | 59.5d | 0d |  | QA* | 8h |  |
| 28 | 1.2.18 | Deploy to STAGE |  | 1d | 2013-04-12 | 2013-04-12 | 27 |  |  | 59.5d | 0d |  | Systems* | 8h |  |
| 29 | 1.2.19 | Appscan on STAGE tier |  | 15d | 2013-04-15 | 2013-05-03 | 28 |  |  | 59.5d | 0d |  | Systems* | 120h |  |
| 30 | 1.2.20 | Regression Testing on STAGE |  | 5d | 2013-04-15 | 2013-04-19 | 28 |  |  | 69.5d | 10d |  | QA* | 40h |  |
| 31 | 1.2.21 | Test Results Review and Reporting |  | 3d | 2013-05-06 | 2013-05-08 | 29, 30 |  |  | 59.5d | 0d |  | QA* | 24h |  |
| 32 | 1.2.22 | Create release artifacts |  | 1d | 2013-04-15 | 2013-04-15 | 28 |  |  | 80d |  |  |  |  |  |
| 33 | 1.2.23 | Deploy to PRODUCTION |  | 2d | 2013-05-09 | 2013-05-10 | 31 |  |  | 59.5d | 0d |  | Systems* | 16h |  |
| 34 | 1.2.24 | Update product landing page |  | 0.5d | 2013-05-13 | 2013-05-13 | 33 |  |  | 59.5d | 0d |  |  |  |  |
| 35 | 1.2.25 | QA smoke tests PRODUCTION |  | 1d | 2013-05-13 | 2013-05-14 | 33, 34 |  |  | 59.5d | 0d |  | QA* | 8h |  |
| 36 | 1.2.26 | MILESTONE: RELEASE 1.4.1 | milestone | 0d | 2013-05-14 | 2013-05-14 | 35 |  |  | 59.5d |  | start no earlier than 2012-01-09 |  |  |  |
| 37 | 1.2.27 | User Support |  | 85d | 2013-02-13 | 2013-06-11 |  |  |  | 39d |  | finish no earlier than 2013-06-11 |  |  |  |

| ID | WBS | Task | Type | Duration | Start | Finish | Predecessors | Total slack | Free slack | Constraint | Resources | Work |
| --- | --- | --- | --- | --- | --- | --- | --- | --- | --- | --- | --- | --- |
| 38 | 1.3 | **caIntegrator 1.5** |  | 264d | 2012-12-03 | 2013-12-05 |  | 0d |  |  |  | 1592h |
| 39 | 1.3.1 | Tech Stack Upgrades - Spring |  | 20d | 2012-12-03 | 2012-12-28 |  | 76d | 0d |  | Abe | 160h |
| 40 | 1.3.2 | Bug Fixes and Improvements |  | 25d | 2012-12-31 | 2013-02-11 | 39 | 70d | 0d |  | Abe | 200h |
| 41 | 1.3.3 | caBIO replacement changes |  | 14d | 2013-02-12 | 2013-03-01 | 40 | 70d | 0d |  | Abe | 112h |
| 42 | 1.3.4 | CSM/UPT upgrade changes |  | 4d | 2013-03-04 | 2013-03-07 | 41 | 70d | 0d |  | Abe | 32h |
| 43 | 1.3.5 | Support for release 1.4.1 |  | 10d | 2013-03-08 | 2013-03-21 | 42 | 70d | 0d |  | Abe | 80h |
| 44 | 1.3.6 | Performance Improvements |  | 30d | 2013-03-22 | 2013-05-02 | 43 | 70d | 0d |  | Abe | 240h |
| 45 | 1.3.7 | Usability and Other Improvements Requested |  | 30d | 2013-05-03 | 2013-06-13 | 44 | 70d | 0d |  | Abe | 240h |
| 46 | 1.3.8 | Compliance (EPLC, Section 508) |  | 5d | 2013-06-14 | 2013-06-20 | 45 | 70d | 0d |  | Abe | 40h |
| 47 | 1.3.9 | MILESTONE: EPLC REVIEW (as needed) | milestone | 0d | 2013-06-20 | 2013-06-20 | 46 | 120d |  | start no earlier than 2012-01-09 |  |  |
| 48 | 1.3.10 | Appscan on Dev |  | 12d | 2013-06-21 | 2013-07-08 | 46 | 108d |  |  |  |  |
| 49 | 1.3.11 | Regression Testing on QA tier |  | 12d | 2013-06-21 | 2013-07-08 | 46 | 70d | 0d |  | QA* | 96h |
| 50 | 1.3.12 | Installer Testing |  | 4d | 2013-07-09 | 2013-07-12 | 49 | 102d | 0d |  | QA* | 32h |
| 51 | 1.3.13 | Section 508 testing on QA tier |  | 2d | 2013-07-15 | 2013-07-16 | 50 | 102d |  |  | QA* | 16h |
| 52 | 1.3.14 | Appscan on QA tier |  | 15d | 2013-07-09 | 2013-07-29 | 49 | 70d | 0d |  | Systems* | 120h |
| 53 | 1.3.15 | Test Results Review and Reporting |  | 3d | 2013-07-30 | 2013-08-01 | 52 | 70d | 0d |  | QA* | 24h |
| 54 | 1.3.16 | Deploy to STAGE |  | 1d | 2013-08-02 | 2013-08-02 | 53 | 70d | 0d |  | Systems* | 8h |
| 55 | 1.3.17 | Appscan on STAGE tier |  | 15d | 2013-08-05 | 2013-08-23 | 54 | 70d | 0d |  | Systems* | 120h |
| 56 | 1.3.18 | Regression Testing on STAGE |  | 5d | 2013-08-05 | 2013-08-09 | 54 | 80d | 10d |  | QA* | 40h |
| 57 | 1.3.19 | Test Results Review and Reporting |  | 1d | 2013-08-26 | 2013-08-26 | 55, 56 | 70d | 0d |  | QA* | 8h |
| 58 | 1.3.20 | Create release artifacts |  | 1d | 2013-08-05 | 2013-08-05 | 54 | 88d |  |  |  |  |
| 59 | 1.3.21 | Deploy to PRODUCTION |  | 2d | 2013-08-27 | 2013-08-28 | 57 | 70d | 0d |  | Systems* | 16h |
| 60 | 1.3.22 | Update product landing page |  | 0.5d | 2013-08-29 | 2013-08-29 | 59 | 70.5d |  |  |  |  |
| 61 | 1.3.23 | QA smoke tests PRODUCTION |  | 1d | 2013-08-29 | 2013-08-29 | 59 | 70d | 0d |  | QA* | 8h |
| 62 | 1.3.24 | MILESTONE: RELEASE 1.5 | milestone | 0d | 2013-08-29 | 2013-08-29 | 61 | 70d |  | start no earlier than 2012-01-09 |  |  |
| 63 | 1.3.25 | User Support |  | 88d | 2013-08-06 | 2013-12-05 | 7 | 0d |  | finish no earlier than 2013-12-05 |  |  |
| 65 | 1.4 | *QA and Systems are external resources and NOT being proposed under this contract. | milestone | 0d | 2012-12-03 | 2012-12-03 |  | 264d |  |  |  |  |
